# Simple Project Plan

Schedule from MS Project, 2018-01-15 to 2018-02-23, A marks actual dates.

## Calendars

- Standard: Mon-Fri 08:00-12:00, 13:00-17:00; Sat-Sun off.

## Resources

| Resource |
| --- |
| 毛远桥 |
| 姚荣富 |

## Schedule

| ID | WBS | Task | Type | Duration | Start | Finish | Predecessors | Complete | Remaining | Actual start | Actual finish | Resources | Work | Actual work |
| --- | --- | --- | --- | --- | --- | --- | --- | --- | --- | --- | --- | --- | --- | --- |
| 1 | 1 | **SQLite操作类库** |  | 2d | 2018-01-15 | 2018-01-16 |  | 100% |  | 2018-01-16 | 2018-01-17 |  | 16h | 16h |
| 2 | 1.1 | Sqlite搭建以及基本操作方法的编写 | manual | 2d | 2018-01-16 A | 2018-01-17 A |  | 100% |  |  |  | 毛远桥 | 16h | 16h |
| 3 | 2 | **Transfer.Flow.Core** |  | 3d? | 2018-01-15 | 2018-01-17 |  | 83% | 0.5d? | 2018-01-18 |  |  | 48h | 40h |
| 4 | 2.1 | 获取素材信息（ws地址配置） | manual | 1d | 2018-01-18 | 2018-01-18 | 2 |  |  |  |  | 毛远桥 | 8h |  |
| 5 | 2.2 | 检查素材状态 | manual | 1d | 2018-01-18 A | 2018-01-18 A |  | 100% |  |  |  | 毛远桥 | 8h | 8h |
| 6 | 2.3 | 拷贝低质量素材（checksum） | manual | 1d | 2018-01-19 A | 2018-01-19 A |  | 100% |  |  |  | 毛远桥 | 8h | 8h |
| 7 | 2.4 | 生成低质量素材 | manual | 0.5d | 2018-01-22 A | 2018-01-22 A |  | 100% |  |  |  | 姚荣富 | 4h | 4h |
| 8 | 2.5 | 素材入库到Hive | manual | 0.5d | 2018-01-23 A | 2018-01-23 A |  | 100% |  |  |  | 姚荣富 | 4h | 4h |
| 9 | 2.6 | 整体调试，优化细节 | manual | 2d | 2018-01-22 A | 2018-01-23 A |  | 100% |  |  |  | 毛远桥 | 16h | 16h |
| 10 | 3 | **Migration Tools（WPF）** |  | 7d? | 2018-01-15 A | 2018-01-23 |  | 69% | 2.14d? |  |  |  | 136h | 92h |
| 11 | 3.1 | **UI界面初步编写** |  | 1d? | 2018-01-15 | 2018-01-15 |  | 100% |  | 2018-01-24 | 2018-01-24 |  | 8h | 8h |
| 12 | 3.1.1 | 根据客户端设计草图构建WPF界面 | manual | 1d | 2018-01-24 A | 2018-01-24 A | 9 | 100% |  |  |  | 毛远桥 | 8h | 8h |
| 13 | 3.2 | **正在执行任务模块编写** |  | 2d? | 2018-01-15 | 2018-01-16 |  | 90% | 0.2d? | 2018-01-25 |  |  | 40h | 36h |
| 14 | 3.2.1 | 建立正在执行任务的Model | manual | 1d | 2018-01-25 A | 2018-01-25 A | 12 | 100% |  |  |  | 毛远桥 | 8h | 8h |
| 15 | 3.2.2 | 正在执行列表界面与数据源对接（保证数据实时更新，尤其是Task Type、Status、Step、DetailInfo的更新） | manual | 1d | 2018-01-26 A | 2018-01-26 A | 14 | 100% |  |  |  | 毛远桥 | 8h | 8h |
| 16 | 3.2.3 | 支持根据任务各项字段进行排序 | manual | 1d | 2018-01-29 A | 2018-01-29 A | 15 | 100% |  |  |  | 毛远桥 | 8h | 8h |
| 17 | 3.2.4 | 支持根据任务素材名、任务类型、任务状态进行过滤查找 | manual | 1d | 2018-01-30 A | 2018-01-30 A | 16 | 100% |  |  |  | 毛远桥 | 8h | 8h |
| 18 | 3.2.5 | 支持导出正在执行任务列表（xml或excel） | manual | 1d | 2018-01-31 A | 2018-01-31 | 17 | 50% | 0.5d |  |  | 毛远桥 | 8h | 4h |
| 19 | 3.3 | **任务历史记录模块编写** |  | 6d? | 2018-01-15 A | 2018-01-22 |  | 100% |  |  | 2018-02-08 |  | 48h | 48h |
| 20 | 3.3.1 | 建立正在历史任务的Model | manual | 1d | 2018-02-01 A | 2018-02-01 A | 18 | 100% |  |  |  | 毛远桥 | 8h | 8h |
| 21 | 3.3.2 | 历史列表界面与数据源对接（添加刷新按钮） | manual | 1d | 2018-02-02 A | 2018-02-02 A | 20 | 100% |  |  |  | 毛远桥 | 8h | 8h |
| 22 | 3.3.3 | 支持选择N个失败任务操作（重做失败任务） | manual | 1d | 2018-02-05 A | 2018-02-05 A | 21 | 100% |  |  |  | 毛远桥 | 8h | 8h |
| 23 | 3.3.4 | 支持根据任务各项字段进行排序（在数据库里排序、又从第一页开始显示） | manual | 1d | 2018-02-06 A | 2018-02-06 A | 22 | 100% |  |  |  | 毛远桥 | 8h | 8h |
| 24 | 3.3.5 | 支持根据任务素材名、任务类型、任务状态进行过滤查找 | manual | 1d | 2018-02-07 A | 2018-02-07 A | 23 | 100% |  |  |  | 毛远桥 | 8h | 8h |
| 25 | 3.3.6 | 分页（以及分页大小设置） | manual | 1d | 2018-01-15 A | 2018-01-15 A |  | 100% |  |  |  |  |  |  |
| 26 | 3.3.7 | 支持导出历史任务列表（xml或excel，数据库里所有满足条件的任务） | manual | 1d | 2018-02-08 A | 2018-02-08 A | 24 | 100% |  |  |  | 毛远桥 | 8h | 8h |
| 27 | 3.4 | 客户端细节完善、整体调试与优化 | manual | 2d | 2018-02-09 | 2018-02-12 | 26 |  |  |  |  | 毛远桥 | 16h |  |
| 28 | 3.5 | Start按钮启动任务，Stop按钮结束任务 | manual | 1d | 2018-02-13 | 2018-02-13 | 27 |  |  |  |  | 毛远桥 | 8h |  |
| 29 | 3.6 | 支持显示当前任务数和总任务数 | manual | 2d | 2018-02-14 | 2018-02-15 | 28 |  |  |  |  | 毛远桥 | 16h |  |

| ID | WBS | Task | Type | Duration | Start | Finish | Resources | Work |
| --- | --- | --- | --- | --- | --- | --- | --- | --- |
| 30 | 4 | **配置相关** |  | 30d? | 2018-01-15 | 2018-02-23 |  | 26h |
| 31 | 4.1 | **配置文件** |  | 6d? | 2018-01-15 | 2018-01-22 |  | 10h |
| 32 | 4.1.1 | WS地址配置(USERID) | manual | 0.25d | 2018-02-20 | 2018-02-20 | 毛远桥 | 2h |
| 33 | 4.1.2 | CMAPI/HIVE的地址配置 | manual | 0.25d | 2018-02-19 | 2018-02-19 | 毛远桥 | 2h |
| 34 | 4.1.3 | 逻辑根目录配置 | manual | 0.25d | 2018-02-19 | 2018-02-19 | 毛远桥 | 2h |
| 35 | 4.1.4 | H (V: --- > \\192.168.1.1) | manual | 0.25d | 2018-02-21 | 2018-02-21 | 毛远桥 | 2h |
| 36 | 4.1.5 | L (用户账号密码，用于获取POOL) | manual | 0.25d | 2018-02-22 | 2018-02-22 | 毛远桥 | 2h |
| 37 | 4.2 | **界面配置** |  | 6d? | 2018-01-15 | 2018-01-22 |  | 16h |
| 38 | 4.2.1 | 并发数(光标离开生效，有效性检查) | manual | 1d | 2018-02-16 | 2018-02-16 | 毛远桥 | 8h |
| 39 | 4.2.2 | 分页大小（同上） | manual | 1d | 2018-02-22 | 2018-02-23 | 毛远桥 | 8h |
